# 项目_软件设计

Schedule from MS Project, 2017-03-08 to 2017-06-26, A marks actual dates.
专业实验室

## Calendars

- 标准: Mon-Fri 08:00-12:00, 13:00-17:00; Sat-Sun off.

## Resources

| Resource | Group |
| --- | --- |
| 刘博 | 15 |
| 苏晓东 | 15 |
| 张磐 | 15 |

## Schedule

| ID | WBS | Task | Type | Duration | Start | Finish | Predecessors | Complete | Remaining | Baseline start | Baseline finish | Baseline duration | Total slack | Constraint | Resources | Work | Actual work |
| --- | --- | --- | --- | --- | --- | --- | --- | --- | --- | --- | --- | --- | --- | --- | --- | --- | --- |
| 1 | 1 | **前期开发** |  | 26d | 2017-03-08 A | 2017-04-12 A |  | 100% |  | 2017-03-08 | 2017-04-12 | 26d |  |  | 刘博; 苏晓东; 张磐 | 832h | 832h |
| 2 | 1.1 | 需求调研分析 |  | 12d | 2017-03-08 A | 2017-03-23 A |  | 100% |  | 2017-03-08 | 2017-03-23 | 12d |  |  | 刘博 | 96h | 96h |
| 3 | 1.2 | 功能模块设计 |  | 7d | 2017-03-24 A | 2017-04-03 A | 2 | 100% |  | 2017-03-24 | 2017-04-03 | 7d |  |  | 苏晓东 | 56h | 56h |
| 4 | 1.3 | 共同编码初步实现界面 留出功能接口 |  | 7d | 2017-04-04 A | 2017-04-12 A | 3 | 100% |  | 2017-04-04 | 2017-04-12 | 7d |  |  | 张磐 | 56h | 56h |
| 5 | 2 | **迭代开发** |  | 35d | 2017-04-13 A | 2017-05-31 |  | 30% | 24.64d | 2017-04-13 | 2017-06-22 | 51d | 18d |  | 刘博; 张磐; 苏晓东 | 1136h | 384.61h |
| 6 | 2.1 | 设计界面与制作软件原型 |  | 3d | 2017-04-13 A | 2017-04-17 A | 4 | 100% |  |  |  |  |  | start no earlier than 2017-04-13 | 苏晓东 | 24h | 24h |
| 7 | 2.2 | 编写概要设计说明书 |  | 3d | 2017-04-13 A | 2017-04-17 A | 4 | 100% |  |  |  |  |  | finish no earlier than 2017-04-14 | 张磐; 刘博 | 48h | 48h |
| 8 | 2.3 | 数据库表及字段设计 |  | 3d | 2017-04-13 A | 2017-04-17 A | 4 | 100% |  |  |  |  |  |  | 刘博 | 24h | 24h |
| 9 | 2.4 | **实现账号相关功能** |  | 5d | 2017-04-18 A | 2017-04-24 A |  | 100% |  | 2017-04-13 | 2017-05-08 | 18d |  |  | 刘博 | 40h | 40h |
| 10 | 2.4.1 | 用户注册 |  | 5d | 2017-04-18 A | 2017-04-24 A | 6, 7 | 100% |  |  |  |  |  |  |  |  |  |
| 11 | 2.4.2 | 普通账号密码登录 |  | 5d | 2017-04-18 A | 2017-04-24 A | 6, 7 | 100% |  |  |  |  |  |  |  |  |  |
| 12 | 2.4.3 | 老年语音登录 |  | 5d | 2017-04-18 A | 2017-04-24 A | 6, 7 | 100% |  |  |  |  |  |  |  |  |  |
| 13 | 2.4.4 | 密码找回 |  | 5d | 2017-04-18 A | 2017-04-24 A | 6, 7 | 100% |  |  |  |  |  |  |  |  |  |
| 14 | 2.5 | 【里程碑】代码整合发布1.0版本 | milestone | 1d | 2017-04-27 A | 2017-04-27 | 10, 11, 12, 13 | 30% | 0.7d | 2017-05-09 | 2017-05-11 | 3d | 0d |  |  |  |  |
| 15 | 2.6 | **实现便捷服务相关功能** |  | 5d | 2017-04-28 | 2017-05-04 |  |  |  | 2017-05-12 | 2017-05-22 | 7d | 0d |  | 张磐 | 40h |  |
| 16 | 2.6.1 | 新闻推送 |  | 5d | 2017-04-28 | 2017-05-04 | 14 |  |  |  |  |  | 0d |  |  |  |  |
| 17 | 2.6.2 | 饮食推荐 |  | 5d | 2017-04-28 | 2017-05-04 | 14 |  |  |  |  |  | 0d |  |  |  |  |
| 18 | 2.6.3 | 音乐、电影推荐 |  | 5d | 2017-04-28 | 2017-05-04 | 14 |  |  |  |  |  | 0d |  |  |  |  |
| 19 | 2.6.4 | 使用帮助 |  | 5d | 2017-04-28 | 2017-05-04 | 14 |  |  |  |  |  | 0d |  |  |  |  |
| 20 | 2.7 | 【里程碑】代码整合发布2.0版本 | milestone | 1d | 2017-05-05 | 2017-05-05 | 16, 17, 18, 19 |  |  | 2017-05-23 | 2017-05-23 | 1d | 0d |  |  |  |  |
| 21 | 2.8 | **实现特色一键相关功能** |  | 5d | 2017-05-08 | 2017-05-12 |  |  |  | 2017-05-24 | 2017-06-01 | 7d | 0d |  | 苏晓东 | 40h |  |
| 22 | 2.8.1 | 一键联系子女 |  | 5d | 2017-05-08 | 2017-05-12 | 20 |  |  |  |  |  | 31d |  |  |  |  |
| 23 | 2.8.2 | 一键SOS |  | 5d | 2017-05-08 | 2017-05-12 | 20 |  |  |  |  |  | 0d |  |  |  |  |
| 24 | 2.9 | 【里程碑】代码整合发布3.0版本 | milestone | 1d | 2017-05-15 | 2017-05-15 | 23 |  |  | 2017-06-02 | 2017-06-02 | 1d | 0d |  |  |  |  |

| ID | WBS | Task | Type | Duration | Start | Finish | Predecessors | Baseline start | Baseline finish | Baseline duration | Total slack | Resources | Work |
| --- | --- | --- | --- | --- | --- | --- | --- | --- | --- | --- | --- | --- | --- |
| 25 | 2.10 | **实现生活相关功能** |  | 5d | 2017-05-16 | 2017-05-22 |  | 2017-06-05 | 2017-06-13 | 7d | 0d | 刘博 | 40h |
| 26 | 2.10.1 | 语音穿衣提醒 |  | 5d | 2017-05-16 | 2017-05-22 | 24 |  |  |  | 0d |  |  |
| 27 | 2.10.2 | 语音报时 |  | 5d | 2017-05-16 | 2017-05-22 | 24 |  |  |  | 0d |  |  |
| 28 | 2.10.3 | 步数管理 |  | 5d | 2017-05-16 | 2017-05-22 | 24 |  |  |  | 0d |  |  |
| 29 | 2.10.4 | 健康分析 |  | 5d | 2017-05-16 | 2017-05-22 | 24 |  |  |  | 0d |  |  |
| 30 | 2.10.5 | 天气查询并语音播报 |  | 5d | 2017-05-16 | 2017-05-22 | 24 |  |  |  | 0d |  |  |
| 31 | 2.11 | 【里程碑】代码整合发布4.0版本 | milestone | 1d | 2017-05-23 | 2017-05-23 | 26, 27, 28, 29, 30 | 2017-06-14 | 2017-06-14 | 1d | 0d |  |  |
| 32 | 2.12 | **实现其他扩展功能** |  | 5d | 2017-05-24 | 2017-05-30 |  | 2017-06-15 | 2017-06-21 | 5d | 0d | 苏晓东 | 40h |
| 33 | 2.12.1 | 聊天功能 |  | 5d | 2017-05-24 | 2017-05-30 | 31 |  |  |  | 0d |  |  |
| 34 | 2.12.2 | 火车票、客车票查询 |  | 5d | 2017-05-24 | 2017-05-30 | 31 |  |  |  | 0d |  |  |
| 35 | 2.13 | 【里程碑】代码整合发布5.0版本 | milestone | 1d | 2017-05-31 | 2017-05-31 | 33, 34 | 2017-06-22 | 2017-06-22 | 1d | 0d |  |  |
| 36 | 3 | **软件测试** |  | 12d | 2017-06-01 | 2017-06-16 |  | 2017-06-23 | 2017-07-10 | 12d | 0d | 张磐; 刘博; 苏晓东 | 320h |
| 37 | 3.1 | 测试阶段 统计BUG信息 |  | 2d | 2017-06-01 | 2017-06-02 | 35 | 2017-06-23 | 2017-06-26 | 2d | 0d | 苏晓东 | 16h |
| 38 | 3.2 | 【里程碑】针对BUG修改 发布6.0 | milestone | 4d | 2017-06-05 | 2017-06-08 | 37 | 2017-06-27 | 2017-06-30 | 4d | 0d |  |  |
| 39 | 3.3 | 回归测试 |  | 2d | 2017-06-09 | 2017-06-12 | 38 | 2017-07-03 | 2017-07-04 | 2d | 0d | 张磐 | 16h |
| 40 | 3.4 | 【里程碑】针对BUG修改 发布7.0 | milestone | 4d | 2017-06-13 | 2017-06-16 | 39 | 2017-07-05 | 2017-07-10 | 4d | 0d |  |  |
| 41 | 4 | **结题交付** |  | 6d | 2017-06-19 | 2017-06-26 |  | 2017-07-11 | 2017-07-18 | 6d | 0d | 刘博; 张磐; 苏晓东 | 192h |
| 42 | 4.1 | 准备相关交付文档、源代码及报告PPT |  | 6d | 2017-06-19 | 2017-06-26 | 40 | 2017-07-11 | 2017-07-18 | 6d | 0d | 刘博 | 48h |
